# WBS final ver1

Schedule from MS Project, 2016-05-16 to 2016-07-18, costs in ₫, A marks actual dates.

## Calendars

- Standard: Mon-Fri 08:00-12:00, 13:00-17:00; Sat-Sun off.

## Resources

| Resource | Rate |
| --- | --- |
| Quân | 10000 |
| Trân | 10000 |
| Vinh | 10000 |

## Schedule

| ID | WBS | Task | Type | Duration | Start | Finish | Predecessors | Complete | Remaining | Total slack | Constraint | Resources | Work | Actual work | Cost | Actual cost |
| --- | --- | --- | --- | --- | --- | --- | --- | --- | --- | --- | --- | --- | --- | --- | --- | --- |
| 1 | 1 | **Website Shoes Store - Team 9** |  | 45.5d | 2016-05-16 08:00 A | 2016-07-18 12:00 |  | 98% | 1.02d | 0d |  |  | 191.73h | 185.73h | 1,957,300 | 1,897,300 |
| 2 | 1.1 | **Phần 1: LÊN KẾ HOẠCH** |  | 0.85d | 2016-05-16 08:00 A | 2016-05-16 15:50 A |  | 100% |  |  |  |  | 7h | 7h | 70,000 | 70,000 |
| 3 | 1.1.1 | Tìm hiểu đề tài và thảo luận |  | 0.25d | 2016-05-16 08:00 A | 2016-05-16 10:00 A |  | 100% |  |  |  | Quân | 2h | 2h | 20,000 | 20,000 |
| 4 | 1.1.2 | Phân tích quy mô dự án |  | 0.25d | 2016-05-16 10:00 A | 2016-05-16 12:00 A | 3 | 100% |  |  |  | Quân | 2h | 2h | 20,000 | 20,000 |
| 5 | 1.1.3 | Liệt kê và phân chia công việc |  | 0.25d | 2016-05-16 13:03 A | 2016-05-16 15:03 A | 4 | 100% |  |  |  | Quân | 2h | 2h | 20,000 | 20,000 |
| 6 | 1.1.4 | **Phân công nhiệm vụ** |  | 0.1d | 2016-05-16 15:00 A | 2016-05-16 15:50 A | 5 | 100% |  |  |  | Quân | 1h | 1h | 10,000 | 10,000 |
| 7 | 1.1.4.1 | Trân - Main coder |  | 0.06d | 2016-05-16 15:00 A | 2016-05-16 15:30 A |  | 100% |  |  |  |  |  |  |  |  |
| 8 | 1.1.4.2 | Quân - Leader, coder, reporter |  | 0.06d | 2016-05-16 15:20 A | 2016-05-16 15:50 A |  | 100% |  |  | start no earlier than 2016-05-16 14:00 |  |  |  |  |  |
| 9 | 1.1.4.3 | Vinh - Tester, coder, Database |  | 0.06d | 2016-05-16 15:03 A | 2016-05-16 15:31 A |  | 100% |  |  |  |  |  |  |  |  |
| 10 | 1.2 | **Phần 2: CÀI PHẦN MỀM VÀ THIẾT KẾ KIẾN TRÚC** |  | 4.12d | 2016-06-09 08:00 A | 2016-06-15 09:00 A |  | 100% |  |  |  |  | 8h | 8h | 80,000 | 80,000 |
| 11 | 1.2.1 | **Cài đặt chương trình hỗ trợ** |  | 1d | 2016-06-09 08:00 A | 2016-06-09 17:00 A |  | 100% |  |  |  | Quân | 5h | 5h | 50,000 | 50,000 |
| 12 | 1.2.1.1 | Navicat/Heidi | manual | 1d | 2016-06-09 08:00 A | 2016-06-09 17:00 A |  | 100% |  |  |  |  |  |  |  |  |
| 13 | 1.2.1.2 | Sublime Text 3 | manual | 1d | 2016-06-09 08:00 A | 2016-06-09 17:00 A |  | 100% |  |  |  |  |  |  |  |  |
| 14 | 1.2.1.3 | Dream Weaver CS6 | manual | 1d | 2016-06-09 08:00 A | 2016-06-09 17:00 A |  | 100% |  |  |  |  |  |  |  |  |
| 15 | 1.2.1.4 | MS Project 2013 | manual | 1d | 2016-06-09 08:00 A | 2016-06-09 17:00 A |  | 100% |  |  |  |  |  |  |  |  |
| 16 | 1.2.1.5 | Xamp/Wamp | manual | 1d | 2016-06-09 08:00 A | 2016-06-09 17:00 A |  | 100% |  |  |  |  |  |  |  |  |
| 17 | 1.2.1.6 | Source Tree | manual | 1d | 2016-06-09 08:00 A | 2016-06-09 17:00 A |  | 100% |  |  |  |  |  |  |  |  |
| 18 | 1.2.1.7 | Trello | manual | 1d | 2016-06-09 08:00 A | 2016-06-09 17:00 A |  | 100% |  |  |  |  |  |  |  |  |
| 19 | 1.2.1.8 | Github | manual | 1d | 2016-06-09 08:00 A | 2016-06-09 17:00 A |  | 100% |  |  |  |  |  |  |  |  |
| 20 | 1.2.1.9 | Star UML | manual | 1d | 2016-06-09 08:00 A | 2016-06-09 17:00 A |  | 100% |  |  |  |  |  |  |  |  |
| 21 | 1.2.1.10 | IntelliJ 14 | manual | 1d | 2016-06-09 08:00 A | 2016-06-09 17:00 A |  | 100% |  |  |  |  |  |  |  |  |
| 22 | 1.2.2 | Usecase Diagram |  | 0.25d | 2016-06-10 08:00 A | 2016-06-10 12:00 A | 11 | 100% |  |  |  | Trân | 2h | 2h | 20,000 | 20,000 |
| 23 | 1.2.3 | EER Diagram |  | 0.12d | 2016-06-15 08:00 A | 2016-06-15 09:00 A | 11 | 100% |  |  |  | Vinh | 1h | 1h | 10,000 | 10,000 |
| 24 | 1.3 | **Phần 3: DATABASE** |  | 0.75d | 2016-06-09 10:00 A | 2016-06-09 17:00 A |  | 100% |  |  |  |  | 3h | 3h | 30,000 | 30,000 |
| 25 | 1.3.1 | Thiết kế cấu trúc database |  | 0.12d | 2016-06-09 10:00 A | 2016-06-09 11:00 A |  | 100% |  |  |  | Quân | 1h | 1h | 10,000 | 10,000 |
| 26 | 1.3.2 | Tìm kiếm thông tin sản phẩm - Nhập Database |  | 0.25d | 2016-06-09 15:00 A | 2016-06-09 17:00 A | 25 | 100% |  |  |  | Vinh | 2h | 2h | 20,000 | 20,000 |

| ID | WBS | Task | Duration | Start | Finish | Predecessors | Complete | Resources | Work | Actual work | Cost | Actual cost |
| --- | --- | --- | --- | --- | --- | --- | --- | --- | --- | --- | --- | --- |
| 27 | 1.4 | **Phần 4: THIẾT KẾ GIAO DIỆN** | 2.12d | 2016-06-15 08:00 A | 2016-06-17 09:00 A |  | 100% |  | 11.25h | 11.25h | 112,500 | 112,500 |
| 28 | 1.4.1 | **Thiết kế giao diện xem sản phẩm** | 0.5d | 2016-06-15 08:00 A | 2016-06-15 12:00 A |  | 100% |  | 4h | 4h | 40,000 | 40,000 |
| 29 | 1.4.1.1 | Trang index | 0.12d | 2016-06-15 08:00 A | 2016-06-15 09:00 A |  | 100% | Quân | 1h | 1h | 10,000 | 10,000 |
| 30 | 1.4.1.2 | Button phân trang | 0.12d | 2016-06-15 09:00 A | 2016-06-15 10:00 A | 29 | 100% | Quân | 1h | 1h | 10,000 | 10,000 |
| 31 | 1.4.1.3 | Trang all product | 0.12d | 2016-06-15 10:00 A | 2016-06-15 11:00 A | 29, 30 | 100% | Quân | 1h | 1h | 10,000 | 10,000 |
| 32 | 1.4.1.4 | Trang details product | 0.12d | 2016-06-15 11:00 A | 2016-06-15 12:00 A | 31 | 100% | Quân | 1h | 1h | 10,000 | 10,000 |
| 33 | 1.4.2 | **Đăng ký - Đăng Nhập - Đăng Xuất** | 0.12d | 2016-06-15 13:03 A | 2016-06-15 14:01 A | 28 | 100% |  | 1h | 1h | 10,000 | 10,000 |
| 34 | 1.4.2.1 | Form đăng ký | 0.06d | 2016-06-15 13:03 A | 2016-06-15 13:33 A |  | 100% | Quân | 0.5h | 0.5h | 5,000 | 5,000 |
| 35 | 1.4.2.2 | Form đăng nhập - đăng xuất | 0.06d | 2016-06-15 13:31 A | 2016-06-15 14:01 A | 34 | 100% | Quân | 0.5h | 0.5h | 5,000 | 5,000 |
| 36 | 1.4.3 | **Tìm kiếm sản phẩm** | 0.12d | 2016-06-15 14:02 A | 2016-06-15 15:01 A | 33 | 100% |  | 1h | 1h | 10,000 | 10,000 |
| 37 | 1.4.3.1 | Trang search | 0.06d | 2016-06-15 14:02 A | 2016-06-15 14:32 A |  | 100% | Quân | 0.5h | 0.5h | 5,000 | 5,000 |
| 38 | 1.4.3.2 | Form Search | 0.06d | 2016-06-15 14:31 A | 2016-06-15 15:01 A | 37 | 100% | Quân | 0.5h | 0.5h | 5,000 | 5,000 |
| 39 | 1.4.4 | **Bình luận sản phẩm** | 0.25d | 2016-06-15 15:00 A | 2016-06-15 17:00 A | 36 | 100% |  | 0.25h | 0.25h | 2,500 | 2,500 |
| 40 | 1.4.4.1 | Khung bình luận sản phẩm | 0.25d | 2016-06-15 15:00 A | 2016-06-15 17:00 A |  | 100% | Quân | 0.25h | 0.25h | 2,500 | 2,500 |
| 41 | 1.4.5 | **Giỏ hàng** | 0.12d | 2016-06-16 08:00 A | 2016-06-16 09:00 A |  | 100% |  | 1h | 1h | 10,000 | 10,000 |
| 42 | 1.4.5.1 | Trang check out | 0.06d | 2016-06-16 08:00 A | 2016-06-16 08:30 A |  | 100% | Quân | 0.5h | 0.5h | 5,000 | 5,000 |
| 43 | 1.4.5.2 | Tạo giỏ hàng | 0.06d | 2016-06-16 08:30 A | 2016-06-16 09:00 A | 42 | 100% | Quân | 0.5h | 0.5h | 5,000 | 5,000 |
| 44 | 1.4.6 | **Giao dịch** | 0.25d | 2016-06-16 09:01 A | 2016-06-16 11:01 A | 41 | 100% |  | 2h | 2h | 20,000 | 20,000 |
| 45 | 1.4.6.1 | Trang tất cả giao dịch | 0.12d | 2016-06-16 09:01 A | 2016-06-16 10:01 A |  | 100% | Quân | 1h | 1h | 10,000 | 10,000 |
| 46 | 1.4.6.2 | Trang chi tiết giao dịch | 0.12d | 2016-06-16 10:01 A | 2016-06-16 11:01 A | 45 | 100% | Quân | 1h | 1h | 10,000 | 10,000 |
| 47 | 1.4.7 | **Thanh toán** | 0.12d | 2016-06-16 11:00 A | 2016-06-16 12:00 A | 44 | 100% |  | 1h | 1h | 10,000 | 10,000 |
| 48 | 1.4.7.1 | Trang confirm | 0.12d | 2016-06-16 11:00 A | 2016-06-16 12:00 A |  | 100% | Quân | 1h | 1h | 10,000 | 10,000 |
| 49 | 1.4.8 | **Quản lý thông tin cá nhân** | 0.12d | 2016-06-17 08:00 A | 2016-06-17 09:00 A |  | 100% |  | 1h | 1h | 10,000 | 10,000 |
| 50 | 1.4.8.1 | Trang thông tin cá nhân + đơn hàng | 0.12d | 2016-06-17 08:00 A | 2016-06-17 09:00 A |  | 100% | Quân | 1h | 1h | 10,000 | 10,000 |

| ID | WBS | Task | Duration | Start | Finish | Predecessors | Complete | Constraint | Resources | Work | Actual work | Cost | Actual cost |
| --- | --- | --- | --- | --- | --- | --- | --- | --- | --- | --- | --- | --- | --- |
| 51 | 1.5 | **Phần 5: THIẾT KẾ GIAO DIỆN (ADMIN)** | 6.38d | 2016-06-17 09:00 A | 2016-06-27 12:00 A |  | 100% |  |  | 10.48h | 10.48h | 104,800 | 104,800 |
| 52 | 1.5.1 | **Trang Dashboard** | 0.5d | 2016-06-17 09:00 A | 2016-06-17 13:58 A | 49 | 100% |  |  | 3.98h | 3.98h | 39,800 | 39,800 |
| 53 | 1.5.1.1 | Trang index admin | 0.12d | 2016-06-17 09:00 A | 2016-06-17 10:00 A |  | 100% | start no earlier than 2016-06-17 09:00 | Quân | 1h | 1h | 10,000 | 10,000 |
| 54 | 1.5.1.2 | Trang show product | 0.12d | 2016-06-17 10:00 A | 2016-06-17 11:00 A | 53 | 100% | start no earlier than 2016-06-17 09:00 | Quân | 1h | 1h | 10,000 | 10,000 |
| 55 | 1.5.1.3 | Trang product detail | 0.12d | 2016-06-17 11:00 A | 2016-06-17 12:00 A | 54 | 100% | finish no earlier than 2016-06-17 17:00 | Quân | 1h | 1h | 10,000 | 10,000 |
| 56 | 1.5.1.4 | Form chỉnh sửa sản phẩm | 0.06d | 2016-06-17 13:01 A | 2016-06-17 13:29 A | 55 | 100% |  | Quân | 0.48h | 0.48h | 4,800 | 4,800 |
| 57 | 1.5.1.5 | Form thêm sản phẩm | 0.06d | 2016-06-17 13:28 A | 2016-06-17 13:58 A | 56 | 100% |  | Quân | 0.5h | 0.5h | 5,000 | 5,000 |
| 58 | 1.5.2 | **Quản lý thành viên** | 0.12d | 2016-06-17 14:01 A | 2016-06-17 14:59 A | 52 | 100% |  |  | 1h | 1h | 10,000 | 10,000 |
| 59 | 1.5.2.1 | Trang show thành viên (bao gồm active thành viên) | 0.06d | 2016-06-17 14:01 A | 2016-06-17 14:31 A |  | 100% | start no earlier than 2016-06-17 14:00 | Quân | 0.5h | 0.5h | 5,000 | 5,000 |
| 60 | 1.5.2.2 | Trang account detail | 0.06d | 2016-06-17 14:29 A | 2016-06-17 14:59 A | 59 | 100% |  | Quân | 0.5h | 0.5h | 5,000 | 5,000 |
| 61 | 1.5.3 | **Quản lý đơn hàng** | 0.12d | 2016-06-17 15:00 A | 2016-06-17 15:59 A | 58 | 100% |  |  | 1h | 1h | 10,000 | 10,000 |
| 62 | 1.5.3.1 | Trang show hóa đơn | 0.06d | 2016-06-17 15:00 A | 2016-06-17 15:30 A |  | 100% |  | Quân | 0.5h | 0.5h | 5,000 | 5,000 |
| 63 | 1.5.3.2 | Trang detail hóa đơn | 0.06d | 2016-06-17 15:29 A | 2016-06-17 15:59 A | 62 | 100% |  | Quân | 0.5h | 0.5h | 5,000 | 5,000 |
| 64 | 1.5.4 | **Quản lý giới tính** | 0.06d | 2016-06-20 08:00 A | 2016-06-20 08:30 A |  | 100% |  |  | 0.5h | 0.5h | 5,000 | 5,000 |
| 65 | 1.5.4.1 | Table hiển thị và chỉnh sửa giới tính | 0.06d | 2016-06-20 08:00 A | 2016-06-20 08:30 A |  | 100% |  | Quân | 0.5h | 0.5h | 5,000 | 5,000 |
| 66 | 1.5.5 | **Quản lý hãng** | 0.06d | 2016-06-20 08:30 A | 2016-06-20 09:00 A | 64 | 100% |  |  | 0.5h | 0.5h | 5,000 | 5,000 |
| 67 | 1.5.5.1 | Table hiển thị và chỉnh sửa hãng | 0.06d | 2016-06-20 08:30 A | 2016-06-20 09:00 A |  | 100% |  | Quân | 0.5h | 0.5h | 5,000 | 5,000 |
| 68 | 1.5.6 | **Quản lý thể thao** | 0.06d | 2016-06-20 08:59 A | 2016-06-20 09:29 A | 66 | 100% |  |  | 0.5h | 0.5h | 5,000 | 5,000 |
| 69 | 1.5.6.1 | Table hiển thị và chỉnh sửa thể thao | 0.06d | 2016-06-20 08:59 A | 2016-06-20 09:29 A |  | 100% |  | Quân | 0.5h | 0.5h | 5,000 | 5,000 |
| 70 | 1.5.7 | **Quản lý màu sắc** | 0.06d | 2016-06-20 09:30 A | 2016-06-20 10:00 A | 68 | 100% |  |  | 0.5h | 0.5h | 5,000 | 5,000 |
| 71 | 1.5.7.1 | Table hiển thị và chỉnh sửa màu sắc | 0.06d | 2016-06-20 09:30 A | 2016-06-20 10:00 A |  | 100% |  | Quân | 0.5h | 0.5h | 5,000 | 5,000 |
| 72 | 1.5.8 | **Thống kê** | 0.06d | 2016-06-20 10:00 A | 2016-06-20 10:30 A | 70 | 100% |  |  | 0.5h | 0.5h | 5,000 | 5,000 |
| 73 | 1.5.8.1 | Trang thống kê tổng quát | 0.06d | 2016-06-20 10:00 A | 2016-06-20 10:30 A |  | 100% |  | Quân | 0.5h | 0.5h | 5,000 | 5,000 |
| 74 | 1.5.9 | **Định nghĩa quyền** | 0.12d | 2016-06-27 10:00 A | 2016-06-27 11:00 A |  | 100% |  |  | 1h | 1h | 10,000 | 10,000 |
| 75 | 1.5.9.1 | Tạo các quyền quản lý | 0.12d | 2016-06-27 10:00 A | 2016-06-27 11:00 A |  | 100% |  | Quân | 1h | 1h | 10,000 | 10,000 |

| ID | WBS | Task | Duration | Start | Finish | Predecessors | Complete | Resources | Work | Actual work | Cost | Actual cost |
| --- | --- | --- | --- | --- | --- | --- | --- | --- | --- | --- | --- | --- |
| 76 | 1.5.10 | **Quản lý phân quyền** | 0.12d | 2016-06-27 11:00 A | 2016-06-27 12:00 A | 74 | 100% |  | 1h | 1h | 10,000 | 10,000 |
| 77 | 1.5.10.1 | Trang phân quyền cho thành viên | 0.12d | 2016-06-27 11:00 A | 2016-06-27 12:00 A |  | 100% | Quân | 1h | 1h | 10,000 | 10,000 |
| 78 | 1.6 | **Phần 6: NHÓM CHỨC NĂNG CƠ BẢN** | 6.87d | 2016-06-16 09:01 A | 2016-06-24 17:00 A |  | 100% |  | 37.5h | 37.5h | 375,000 | 375,000 |
| 79 | 1.6.1 | **Xem sản phẩm** | 1.12d | 2016-06-16 10:03 A | 2016-06-17 11:02 A | 28 | 100% |  | 9h | 9h | 90,000 | 90,000 |
| 80 | 1.6.1.1 | **Cài đặt** | 0.74d | 2016-06-16 10:03 A | 2016-06-16 19:00 A |  | 100% |  | 8h | 8h | 80,000 | 80,000 |
| 81 | 1.6.1.1.1 | Trang index | 0.12d | 2016-06-16 10:03 A | 2016-06-16 11:03 A |  | 100% | Trân | 1h | 1h | 10,000 | 10,000 |
| 82 | 1.6.1.1.2 | Xem sản phẩm (phân trang) | 0.25d | 2016-06-16 11:03 A | 2016-06-16 14:03 A | 81 | 100% | Trân | 2h | 2h | 20,000 | 20,000 |
| 83 | 1.6.1.1.3 | Xem loại sản phẩm (phân trang) | 0.12d | 2016-06-16 14:02 A | 2016-06-16 15:02 A | 82 | 100% | Trân | 1h | 1h | 10,000 | 10,000 |
| 84 | 1.6.1.1.4 | Xem hãng phân trang | 0.12d | 2016-06-16 15:00 A | 2016-06-16 16:00 A | 83 | 100% | Trân | 1h | 1h | 10,000 | 10,000 |
| 85 | 1.6.1.1.5 | Xem sản phẩm mới nhất | 0.12d | 2016-06-16 15:57 A | 2016-06-16 17:00 A | 84 | 100% | Trân | 1h | 1h | 10,000 | 10,000 |
| 86 | 1.6.1.1.6 | Xem sản phẩm hot nhất | 0.12d | 2016-06-16 17:00 A | 2016-06-16 18:00 A | 85 | 100% | Trân | 1h | 1h | 10,000 | 10,000 |
| 87 | 1.6.1.1.7 | Xem chi tiết sản phẩm | 0.12d | 2016-06-16 18:00 A | 2016-06-16 19:00 A | 86 | 100% | Trân | 1h | 1h | 10,000 | 10,000 |
| 88 | 1.6.1.2 | **Kiểm thử** | 0.13d | 2016-06-17 10:01 A | 2016-06-17 11:02 A | 80 | 100% |  | 1h | 1h | 10,000 | 10,000 |
| 89 | 1.6.1.2.1 | Test chức năng | 0.06d | 2016-06-17 10:01 A | 2016-06-17 10:31 A |  | 100% | Vinh | 0.5h | 0.5h | 5,000 | 5,000 |
| 90 | 1.6.1.2.2 | Báo cáo lỗi | 0.06d | 2016-06-17 10:32 A | 2016-06-17 11:02 A | 89 | 100% | Vinh | 0.5h | 0.5h | 5,000 | 5,000 |
| 91 | 1.6.2 | **Đăng ký thành viên** | 0.81d | 2016-06-16 09:01 A | 2016-06-16 16:30 A | 33 | 100% |  | 5.5h | 5.5h | 55,000 | 55,000 |
| 92 | 1.6.2.1 | **Cài đặt** | 0.5d | 2016-06-16 09:01 A | 2016-06-16 14:01 A |  | 100% |  | 4h | 4h | 40,000 | 40,000 |
| 93 | 1.6.2.1.1 | Đăng ký thành viên mới | 0.5d | 2016-06-16 09:01 A | 2016-06-16 14:01 A |  | 100% | Quân | 4h | 4h | 40,000 | 40,000 |
| 94 | 1.6.2.2 | **Kiểm thử** | 0.19d | 2016-06-16 15:00 A | 2016-06-16 16:30 A | 92 | 100% |  | 1.5h | 1.5h | 15,000 | 15,000 |
| 95 | 1.6.2.2.1 | Test chức năng | 0.12d | 2016-06-16 15:00 A | 2016-06-16 16:00 A |  | 100% | Vinh | 1h | 1h | 10,000 | 10,000 |
| 96 | 1.6.2.2.2 | Báo cáo lỗi | 0.06d | 2016-06-16 16:00 A | 2016-06-16 16:30 A | 95 | 100% | Vinh | 0.5h | 0.5h | 5,000 | 5,000 |
| 97 | 1.6.3 | **Đăng nhập - Đăng xuất** | 0.69d | 2016-06-21 09:00 A | 2016-06-21 15:31 A | 33 | 100% |  | 4h | 4h | 40,000 | 40,000 |
| 98 | 1.6.3.1 | **Cài đặt** | 0.31d | 2016-06-21 09:00 A | 2016-06-21 11:30 A |  | 100% |  | 2.5h | 2.5h | 25,000 | 25,000 |
| 99 | 1.6.3.1.1 | Đăng nhập - Đăng xuất | 0.31d | 2016-06-21 09:00 A | 2016-06-21 11:30 A |  | 100% | Quân | 2.5h | 2.5h | 25,000 | 25,000 |

| ID | WBS | Task | Duration | Start | Finish | Predecessors | Complete | Resources | Work | Actual work | Cost | Actual cost |
| --- | --- | --- | --- | --- | --- | --- | --- | --- | --- | --- | --- | --- |
| 100 | 1.6.3.2 | **Kiểm thử** | 0.19d | 2016-06-21 14:01 A | 2016-06-21 15:31 A | 98 | 100% |  | 1.5h | 1.5h | 15,000 | 15,000 |
| 101 | 1.6.3.2.1 | Test chức năng | 0.12d | 2016-06-21 14:01 A | 2016-06-21 15:01 A |  | 100% | Vinh | 1h | 1h | 10,000 | 10,000 |
| 102 | 1.6.3.2.2 | Báo cáo lỗi | 0.06d | 2016-06-21 15:01 A | 2016-06-21 15:31 A | 101 | 100% | Vinh | 0.5h | 0.5h | 5,000 | 5,000 |
| 103 | 1.6.4 | **Tìm kiếm sản phẩm** | 0.62d | 2016-06-22 10:02 A | 2016-06-22 16:00 A | 36 | 100% |  | 2h | 2h | 20,000 | 20,000 |
| 104 | 1.6.4.1 | **Cài đặt** | 0.12d | 2016-06-22 10:02 A | 2016-06-22 11:02 A |  | 100% |  | 1h | 1h | 10,000 | 10,000 |
| 105 | 1.6.4.1.1 | Tìm kiếm sản phẩm | 0.12d | 2016-06-22 10:02 A | 2016-06-22 11:02 A |  | 100% | Quân | 1h | 1h | 10,000 | 10,000 |
| 106 | 1.6.4.2 | **Kiểm thử** | 0.12d | 2016-06-22 15:00 A | 2016-06-22 16:00 A | 104 | 100% |  | 1h | 1h | 10,000 | 10,000 |
| 107 | 1.6.4.2.1 | Test chức năng | 0.06d | 2016-06-22 15:00 A | 2016-06-22 15:30 A |  | 100% | Vinh | 0.5h | 0.5h | 5,000 | 5,000 |
| 108 | 1.6.4.2.2 | Báo cáo lỗi | 0.06d | 2016-06-22 15:30 A | 2016-06-22 16:00 A | 107 | 100% | Vinh | 0.5h | 0.5h | 5,000 | 5,000 |
| 109 | 1.6.5 | **Bình luận sản phẩm** | 0.69d | 2016-06-24 09:02 A | 2016-06-24 15:33 A | 39 | 100% |  | 4.5h | 4.5h | 45,000 | 45,000 |
| 110 | 1.6.5.1 | **Cài đặt** | 0.5d | 2016-06-24 09:02 A | 2016-06-24 14:02 A |  | 100% |  | 4h | 4h | 40,000 | 40,000 |
| 111 | 1.6.5.1.1 | Bình luận sản phẩm | 0.5d | 2016-06-24 09:02 A | 2016-06-24 14:02 A |  | 100% | Quân | 4h | 4h | 40,000 | 40,000 |
| 112 | 1.6.5.2 | **Kiểm thử** | 0.06d | 2016-06-24 15:03 A | 2016-06-24 15:33 A | 110 | 100% |  | 0.5h | 0.5h | 5,000 | 5,000 |
| 113 | 1.6.5.2.1 | Test chức năng | 0.03d | 2016-06-24 15:03 A | 2016-06-24 15:18 A |  | 100% | Vinh | 0.25h | 0.25h | 2,500 | 2,500 |
| 114 | 1.6.5.2.2 | Báo cáo lỗi | 0.03d | 2016-06-24 15:18 A | 2016-06-24 15:33 A | 113 | 100% | Vinh | 0.25h | 0.25h | 2,500 | 2,500 |
| 115 | 1.6.6 | **Giỏ hàng** | 1.75d | 2016-06-20 10:00 A | 2016-06-21 17:00 A | 41 | 100% |  | 6.5h | 6.5h | 65,000 | 65,000 |
| 116 | 1.6.6.1 | **Cài đặt** | 1.19d | 2016-06-20 10:00 A | 2016-06-21 11:30 A |  | 100% |  | 5.5h | 5.5h | 55,000 | 55,000 |
| 117 | 1.6.6.1.1 | Chức năng add to cart | 0.25d | 2016-06-20 10:00 A | 2016-06-20 12:00 A |  | 100% | Trân | 2h | 2h | 20,000 | 20,000 |
| 118 | 1.6.6.1.2 | Chức năng chỉnh sửa số lượng trong cart | 0.25d | 2016-06-20 15:00 A | 2016-06-20 17:00 A | 117 | 100% | Trân | 2h | 2h | 20,000 | 20,000 |
| 119 | 1.6.6.1.3 | Chức năng xóa sản phẩm trong cart | 0.19d | 2016-06-21 10:00 A | 2016-06-21 11:30 A | 117 | 100% | Trân | 1.5h | 1.5h | 15,000 | 15,000 |
| 120 | 1.6.6.2 | **Kiểm thử** | 0.12d | 2016-06-21 16:01 A | 2016-06-21 17:00 A | 116 | 100% |  | 1h | 1h | 10,000 | 10,000 |
| 121 | 1.6.6.2.1 | Test chức năng | 0.06d | 2016-06-21 16:01 A | 2016-06-21 16:31 A |  | 100% | Vinh | 0.5h | 0.5h | 5,000 | 5,000 |
| 122 | 1.6.6.2.2 | Báo cáo lỗi | 0.06d | 2016-06-21 16:30 A | 2016-06-21 17:00 A | 121 | 100% | Vinh | 0.5h | 0.5h | 5,000 | 5,000 |
| 123 | 1.6.7 | **Contact Us** | 0.12d | 2016-06-22 10:02 A | 2016-06-22 11:02 A |  | 100% |  | 1h | 1h | 10,000 | 10,000 |
| 124 | 1.6.7.1 | Tạo trang contact us | 0.12d | 2016-06-22 10:02 A | 2016-06-22 11:02 A |  | 100% | Trân | 1h | 1h | 10,000 | 10,000 |

| ID | WBS | Task | Duration | Start | Finish | Predecessors | Complete | Remaining | Total slack | Free slack | Constraint | Resources | Work | Actual work | Cost | Actual cost |
| --- | --- | --- | --- | --- | --- | --- | --- | --- | --- | --- | --- | --- | --- | --- | --- | --- |
| 125 | 1.6.8 | **Quản lý thông cá nhân** | 1.63d | 2016-06-23 10:57 A | 2016-06-24 17:00 A | 49 | 100% |  |  |  |  |  | 5h | 5h | 50,000 | 50,000 |
| 126 | 1.6.8.1 | **Cài đặt** | 0.52d | 2016-06-23 10:57 A | 2016-06-23 16:07 A |  | 100% |  |  |  |  |  | 4h | 4h | 40,000 | 40,000 |
| 127 | 1.6.8.1.1 | Show thông tin cá nhân | 0.12d | 2016-06-23 10:57 A | 2016-06-23 11:57 A |  | 100% |  |  |  |  | Trân | 1h | 1h | 10,000 | 10,000 |
| 128 | 1.6.8.1.2 | Show đơn hàng | 0.12d | 2016-06-23 13:00 A | 2016-06-23 14:00 A | 127 | 100% |  |  |  |  | Trân | 1h | 1h | 10,000 | 10,000 |
| 129 | 1.6.8.1.3 | Xem chi tiết đơn hàng | 0.12d | 2016-06-23 14:02 A | 2016-06-23 15:02 A | 128 | 100% |  |  |  |  | Trân | 1h | 1h | 10,000 | 10,000 |
| 130 | 1.6.8.1.4 | Thay đổi trạng thái đơn hàng | 0.12d | 2016-06-23 15:07 A | 2016-06-23 16:07 A | 129 | 100% |  |  |  |  | Trân | 1h | 1h | 10,000 | 10,000 |
| 131 | 1.6.8.2 | **Kiểm thử** | 0.12d | 2016-06-24 16:01 A | 2016-06-24 17:00 A |  | 100% |  |  |  |  |  | 1h | 1h | 10,000 | 10,000 |
| 132 | 1.6.8.2.1 | Test chức năng | 0.06d | 2016-06-24 16:01 A | 2016-06-24 16:31 A |  | 100% |  |  |  |  | Vinh | 0.5h | 0.5h | 5,000 | 5,000 |
| 133 | 1.6.8.2.2 | Báo cáo lỗi | 0.06d | 2016-06-24 16:30 A | 2016-06-24 17:00 A | 132 | 100% |  |  |  | start no earlier than 2016-06-24 16:30 | Vinh | 0.5h | 0.5h | 5,000 | 5,000 |
| 134 | 1.7 | **Phần 7: NHÓM CHỨC NĂNG NÂNG CAO** | 17d | 2016-06-23 08:00 A | 2016-07-15 17:00 |  | 94% | 1d | 0.5d |  |  |  | 103.5h | 97.5h | 1,075,000 | 1,015,000 |
| 135 | 1.7.1 | **Tìm kiếm sản phẩm nâng cao** | 4.57d | 2016-06-23 08:00 A | 2016-06-29 13:32 |  | 82% | 0.84d | 12.93d |  |  |  | 32.5h | 26.5h | 325,000 | 265,000 |
| 136 | 1.7.1.1 | **Cài đặt** | 3.75d | 2016-06-23 08:00 A | 2016-06-28 15:00 |  | 80% | 0.75d | 13.75d |  |  |  | 30h | 24h | 300,000 | 240,000 |
| 137 | 1.7.1.1.1 | Chức năng tìm kiếm theo hãng có phân trang | 2.5d | 2016-06-23 08:00 A | 2016-06-27 12:00 |  | 80% | 0.5d | 1d | 0d |  | Vinh | 20h | 16h | 200,000 | 160,000 |
| 138 | 1.7.1.1.2 | Chức năng tìm kiếm theo giá có phân trang | 1.25d | 2016-06-27 12:00 A | 2016-06-28 15:00 | 137 | 80% | 0.25d | 13.75d |  |  | Vinh | 10h | 8h | 100,000 | 80,000 |
| 139 | 1.7.1.2 | **Kiểm thử** | 0.82d | 2016-06-28 15:00 A | 2016-06-29 13:32 A | 136 | 100% |  |  |  |  |  | 2.5h | 2.5h | 25,000 | 25,000 |
| 140 | 1.7.1.2.1 | Test chức năng | 0.25d | 2016-06-28 15:00 A | 2016-06-28 17:00 A |  | 100% |  |  |  |  | Trân | 2h | 2h | 20,000 | 20,000 |
| 141 | 1.7.1.2.2 | Báo cáo lỗi | 0.06d | 2016-06-29 13:02 A | 2016-06-29 13:32 A | 140 | 100% |  |  |  | start no earlier than 2016-06-29 13:02 | Trân | 0.5h | 0.5h | 5,000 | 5,000 |
| 142 | 1.7.2 | **Thanh toán** | 1.56d | 2016-06-30 10:00 A | 2016-07-01 15:30 A | 139 | 100% |  |  |  |  |  | 7.5h | 7.5h | 75,000 | 75,000 |
| 143 | 1.7.2.1 | **Cài đặt** | 0.75d | 2016-06-30 10:00 A | 2016-06-30 18:00 A |  | 100% |  |  |  |  |  | 6h | 6h | 60,000 | 60,000 |
| 144 | 1.7.2.1.1 | Chức năng thanh toán | 0.25d | 2016-06-30 10:00 A | 2016-06-30 12:00 A |  | 100% |  |  |  |  | Trân | 2h | 2h | 20,000 | 20,000 |
| 145 | 1.7.2.1.2 | Chức năng thanh toán online | 0.38d | 2016-06-30 13:59 A | 2016-06-30 16:59 A | 144 | 100% |  |  |  |  | Trân | 3h | 3h | 30,000 | 30,000 |
| 146 | 1.7.2.1.3 | Chức năng confirm qua email | 0.12d | 2016-06-30 17:00 A | 2016-06-30 18:00 A | 145 | 100% |  |  |  |  | Trân | 1h | 1h | 10,000 | 10,000 |
| 147 | 1.7.2.2 | **Kiểm thử** | 0.19d | 2016-07-01 13:59 A | 2016-07-01 15:30 A | 143 | 100% |  |  |  |  |  | 1.5h | 1.5h | 15,000 | 15,000 |
| 148 | 1.7.2.2.1 | Test chức năng | 0.12d | 2016-07-01 13:59 A | 2016-07-01 14:59 A |  | 100% |  |  |  |  | Vinh | 1h | 1h | 10,000 | 10,000 |
| 149 | 1.7.2.2.2 | Báo cáo lỗi | 0.06d | 2016-07-01 15:00 A | 2016-07-01 15:30 A | 148 | 100% |  |  |  |  | Vinh | 0.5h | 0.5h | 5,000 | 5,000 |

| ID | WBS | Task | Duration | Start | Finish | Predecessors | Complete | Actual start | Resources | Work | Actual work | Cost | Actual cost |
| --- | --- | --- | --- | --- | --- | --- | --- | --- | --- | --- | --- | --- | --- |
| 150 | 1.7.3 | **Quản lý sản phẩm (Admin)** | 3.19d | 2016-07-01 10:00 A | 2016-07-06 11:30 A | 52 | 100% |  |  | 25.5h | 25.5h | 295,000 | 295,000 |
| 151 | 1.7.3.1 | **Cài đặt** | 2.62d | 2016-07-01 10:00 A | 2016-07-05 16:00 A |  | 100% |  |  | 23h | 23h | 270,000 | 270,000 |
| 152 | 1.7.3.1.1 | Tìm hiểu upload hình | 1d | 2016-07-01 10:00 A | 2016-07-01 19:00 A |  | 100% |  | Trân | 9h | 9h | 100,000 | 100,000 |
| 153 | 1.7.3.1.2 | Xem tất cả sản phẩm | 0.38d | 2016-07-01 18:00 A | 2016-07-04 12:00 A |  | 100% |  | Trân | 3h | 3h | 30,000 | 30,000 |
| 154 | 1.7.3.1.3 | Thêm - Xóa - Sửa sản phẩm | 1.38d | 2016-07-04 13:00 A | 2016-07-05 16:00 A | 153 | 100% |  | Trân | 11h | 11h | 140,000 | 140,000 |
| 155 | 1.7.3.2 | **Kiểm thử** | 0.31d | 2016-07-06 09:01 A | 2016-07-06 11:30 A | 151 | 100% |  |  | 2.5h | 2.5h | 25,000 | 25,000 |
| 156 | 1.7.3.2.1 | Test chức năng | 0.25d | 2016-07-06 09:01 A | 2016-07-06 11:01 A |  | 100% |  | Vinh | 2h | 2h | 20,000 | 20,000 |
| 157 | 1.7.3.2.2 | Báo cáo lỗi | 0.06d | 2016-07-06 11:00 A | 2016-07-06 11:30 A | 156 | 100% |  | Vinh | 0.5h | 0.5h | 5,000 | 5,000 |
| 158 | 1.7.4 | **Quản lý đơn hàng (Admin)** | 0.75d | 2016-07-07 10:00 A | 2016-07-07 17:00 A | 61 | 100% |  |  | 5h | 5h | 50,000 | 50,000 |
| 159 | 1.7.4.1 | **Cài đặt** | 0.5d | 2016-07-07 10:00 A | 2016-07-07 15:00 A |  | 100% |  |  | 4h | 4h | 40,000 | 40,000 |
| 160 | 1.7.4.1.1 | Chức năng xem thông tin chi tiết đơn hàng | 0.25d | 2016-07-07 10:00 A | 2016-07-07 12:00 A |  | 100% |  | Trân | 2h | 2h | 20,000 | 20,000 |
| 161 | 1.7.4.1.2 | Chức năng xem tổng đơn hàng và theo ngày | 0.25d | 2016-07-07 12:59 A | 2016-07-07 15:00 A | 160 | 100% |  | Trân | 2h | 2h | 20,000 | 20,000 |
| 162 | 1.7.4.2 | **Kiểm thử** | 0.12d | 2016-07-07 16:01 A | 2016-07-07 17:00 A |  | 100% |  |  | 1h | 1h | 10,000 | 10,000 |
| 163 | 1.7.4.2.1 | Test chức năng | 0.06d | 2016-07-07 16:01 A | 2016-07-07 16:31 A |  | 100% |  | Vinh | 0.5h | 0.5h | 5,000 | 5,000 |
| 164 | 1.7.4.2.2 | Báo cáo lỗi | 0.06d | 2016-07-07 16:30 A | 2016-07-07 17:00 A | 163 | 100% |  | Vinh | 0.5h | 0.5h | 5,000 | 5,000 |
| 165 | 1.7.5 | **Quản lý thành viên (Admin)** | 0.75d | 2016-07-08 10:00 A | 2016-07-09 09:00 A |  | 100% |  |  | 9h | 9h | 90,000 | 90,000 |
| 166 | 1.7.5.1 | **Cài đặt** | 0.75d | 2016-07-08 10:00 A | 2016-07-08 18:59 A |  | 100% |  |  | 8h | 8h | 80,000 | 80,000 |
| 167 | 1.7.5.1.1 | Chức năng xem toàn bộ thành viên | 0.62d | 2016-07-08 10:00 A | 2016-07-08 16:00 A |  | 100% |  | Trân | 5h | 5h | 50,000 | 50,000 |
| 168 | 1.7.5.1.2 | Chức năng active thành viên | 0.38d | 2016-07-08 15:59 A | 2016-07-08 18:59 A | 167 | 100% |  | Trân | 3h | 3h | 30,000 | 30,000 |
| 169 | 1.7.5.2 | **Kiểm thử** | 0.12d | 2016-07-09 08:00 | 2016-07-09 09:00 A | 166 | 100% | 2016-07-09 08:01 |  | 1h | 1h | 10,000 | 10,000 |
| 170 | 1.7.5.2.1 | Test chức năng | 0.06d | 2016-07-09 08:01 A | 2016-07-09 08:31 A |  | 100% |  | Vinh | 0.5h | 0.5h | 5,000 | 5,000 |
| 171 | 1.7.5.2.2 | Báo cáo lỗi | 0.06d | 2016-07-09 08:30 A | 2016-07-09 09:00 A | 170 | 100% |  | Vinh | 0.5h | 0.5h | 5,000 | 5,000 |
| 172 | 1.7.6 | **Quản lý hãng (Admin)** | 0.56d | 2016-06-28 09:01 A | 2016-06-28 14:31 A | 66 | 100% |  |  | 3h | 3h | 30,000 | 30,000 |
| 173 | 1.7.6.1 | **Cài đặt** | 0.31d | 2016-06-28 09:01 A | 2016-06-28 11:31 A |  | 100% |  |  | 2.5h | 2.5h | 25,000 | 25,000 |
| 174 | 1.7.6.1.1 | Chức năng xem toàn bộ hãng | 0.12d | 2016-06-28 09:01 A | 2016-06-28 10:01 A |  | 100% |  | Quân | 1h | 1h | 10,000 | 10,000 |
| 175 | 1.7.6.1.2 | Thêm - xóa - sửa hãng | 0.19d | 2016-06-28 10:01 A | 2016-06-28 11:31 A | 174 | 100% |  | Quân | 1.5h | 1.5h | 15,000 | 15,000 |

Notes:
- 173: Fix code 30 mins

| ID | WBS | Task | Duration | Start | Finish | Predecessors | Complete | Resources | Work | Actual work | Cost | Actual cost |
| --- | --- | --- | --- | --- | --- | --- | --- | --- | --- | --- | --- | --- |
| 176 | 1.7.6.2 | **Kiểm thử** | 0.06d | 2016-06-28 14:01 A | 2016-06-28 14:31 A | 173 | 100% |  | 0.5h | 0.5h | 5,000 | 5,000 |
| 177 | 1.7.6.2.1 | Test chức năng | 0.04d | 2016-06-28 14:01 A | 2016-06-28 14:20 A |  | 100% | Vinh | 0.33h | 0.33h | 3,300 | 3,300 |
| 178 | 1.7.6.2.2 | Báo cáo lỗi | 0.02d | 2016-06-28 14:21 A | 2016-06-28 14:31 A | 177 | 100% | Vinh | 0.17h | 0.17h | 1,700 | 1,700 |
| 179 | 1.7.7 | **Quản lý thể thao (Admin)** | 0.56d | 2016-06-29 09:00 A | 2016-06-29 14:30 A | 68 | 100% |  | 3h | 3h | 30,000 | 30,000 |
| 180 | 1.7.7.1 | **Cài đặt** | 0.31d | 2016-06-29 09:00 A | 2016-06-29 11:30 A |  | 100% |  | 2.5h | 2.5h | 25,000 | 25,000 |
| 181 | 1.7.7.1.1 | Chức năng xem toàn bộ thể thao | 0.12d | 2016-06-29 09:00 A | 2016-06-29 10:00 A |  | 100% | Quân | 1h | 1h | 10,000 | 10,000 |
| 182 | 1.7.7.1.2 | Thêm - xóa - sửa thể thao | 0.19d | 2016-06-29 10:00 A | 2016-06-29 11:30 A | 181 | 100% | Quân | 1.5h | 1.5h | 15,000 | 15,000 |
| 183 | 1.7.7.2 | **Kiểm thử** | 0.06d | 2016-06-29 14:00 A | 2016-06-29 14:30 A | 180 | 100% |  | 0.5h | 0.5h | 5,000 | 5,000 |
| 184 | 1.7.7.2.1 | Test chức năng | 0.04d | 2016-06-29 14:00 A | 2016-06-29 14:19 A |  | 100% | Vinh | 0.33h | 0.33h | 3,300 | 3,300 |
| 185 | 1.7.7.2.2 | Báo cáo lỗi | 0.02d | 2016-06-29 14:20 A | 2016-06-29 14:30 A | 184 | 100% | Vinh | 0.17h | 0.17h | 1,700 | 1,700 |
| 186 | 1.7.8 | **Quản lý giới tính (Admin)** | 0.39d | 2016-06-29 13:00 A | 2016-06-29 16:07 A | 64 | 100% |  | 3h | 3h | 30,000 | 30,000 |
| 187 | 1.7.8.1 | **Cài đặt** | 0.31d | 2016-06-29 13:00 A | 2016-06-29 15:30 A |  | 100% |  | 2.5h | 2.5h | 25,000 | 25,000 |
| 188 | 1.7.8.1.1 | Chức năng xem toàn bộ giới tính | 0.12d | 2016-06-29 13:00 A | 2016-06-29 14:00 A |  | 100% | Quân | 1h | 1h | 10,000 | 10,000 |
| 189 | 1.7.8.1.2 | Thêm - xóa - sửa giới tính | 0.19d | 2016-06-29 14:00 A | 2016-06-29 15:30 A | 188 | 100% | Quân | 1.5h | 1.5h | 15,000 | 15,000 |
| 190 | 1.7.8.2 | **Kiểm thử** | 0.06d | 2016-06-29 15:38 A | 2016-06-29 16:07 A | 183 | 100% |  | 0.5h | 0.5h | 5,000 | 5,000 |
| 191 | 1.7.8.2.1 | Test chức năng | 0.04d | 2016-06-29 15:38 A | 2016-06-29 15:57 A |  | 100% | Vinh | 0.33h | 0.33h | 3,300 | 3,300 |
| 192 | 1.7.8.2.2 | Báo cáo lỗi | 0.02d | 2016-06-29 15:57 A | 2016-06-29 16:07 A | 191 | 100% | Vinh | 0.17h | 0.17h | 1,700 | 1,700 |
| 193 | 1.7.9 | **Quản lý màu sắc (Admin)** | 0.56d | 2016-06-30 09:00 A | 2016-06-30 14:30 A | 70 | 100% |  | 3h | 3h | 30,000 | 30,000 |
| 194 | 1.7.9.1 | **Cài đặt** | 0.31d | 2016-06-30 09:00 A | 2016-06-30 11:30 A |  | 100% |  | 2.5h | 2.5h | 25,000 | 25,000 |
| 195 | 1.7.9.1.1 | Chức năng xem toàn bộ màu sắc | 0.12d | 2016-06-30 09:00 A | 2016-06-30 10:00 A |  | 100% | Quân | 1h | 1h | 10,000 | 10,000 |
| 196 | 1.7.9.1.2 | Thêm - xóa - sửa màu sắc | 0.19d | 2016-06-30 10:00 A | 2016-06-30 11:30 A | 195 | 100% | Quân | 1.5h | 1.5h | 15,000 | 15,000 |
| 197 | 1.7.9.2 | **Kiểm thử** | 0.06d | 2016-06-30 14:01 A | 2016-06-30 14:30 A | 194 | 100% |  | 0.5h | 0.5h | 5,000 | 5,000 |
| 198 | 1.7.9.2.1 | Test chức năng | 0.04d | 2016-06-30 14:01 A | 2016-06-30 14:20 A |  | 100% | Vinh | 0.33h | 0.33h | 3,300 | 3,300 |
| 199 | 1.7.9.2.2 | Báo cáo lỗi | 0.02d | 2016-06-30 14:20 A | 2016-06-30 14:30 A | 198 | 100% | Vinh | 0.17h | 0.17h | 1,700 | 1,700 |

Notes:
- 179: fix code 30 mins
- 186: fix code 30 mins
- 193: fix code 30 mins

| ID | WBS | Task | Duration | Start | Finish | Predecessors | Complete | Constraint | Resources | Work | Actual work | Cost | Actual cost |
| --- | --- | --- | --- | --- | --- | --- | --- | --- | --- | --- | --- | --- | --- |
| 200 | 1.7.10 | **Định nghĩa quyền** | 0.36d | 2016-07-11 09:59 A | 2016-07-11 13:50 A | 165 | 100% |  |  | 2.83h | 2.83h | 28,333.33 | 28,333.33 |
| 201 | 1.7.10.1 | **Cài đặt** | 0.25d | 2016-07-11 09:59 A | 2016-07-11 12:00 A |  | 100% |  |  | 2h | 2h | 20,000 | 20,000 |
| 202 | 1.7.10.1.1 | Giới hạn quyền | 0.12d | 2016-07-11 09:59 A | 2016-07-11 11:00 A |  | 100% |  | Trân | 1h | 1h | 10,000 | 10,000 |
| 203 | 1.7.10.1.2 | Tự tạo quyền cho từng vị trí | 0.12d | 2016-07-11 11:00 A | 2016-07-11 12:00 A | 202 | 100% |  | Trân | 1h | 1h | 10,000 | 10,000 |
| 204 | 1.7.10.2 | **Kiểm thử** | 0.1d | 2016-07-11 13:00 A | 2016-07-11 13:50 A | 201 | 100% |  |  | 0.83h | 0.83h | 8,333.33 | 8,333.33 |
| 205 | 1.7.10.2.1 | Test chức năng | 0.06d | 2016-07-11 13:00 A | 2016-07-11 13:30 A |  | 100% |  | Vinh | 0.5h | 0.5h | 5,000 | 5,000 |
| 206 | 1.7.10.2.2 | Báo cáo lỗi | 0.04d | 2016-07-11 13:30 A | 2016-07-11 13:50 A | 205 | 100% |  | Vinh | 0.33h | 0.33h | 3,333.33 | 3,333.33 |
| 207 | 1.7.11 | **Gán quyền** | 0.25d | 2016-07-11 13:00 A | 2016-07-11 15:01 A | 200 | 100% |  |  | 1.5h | 1.5h | 15,000 | 15,000 |
| 208 | 1.7.11.1 | **Cài đặt** | 0.12d | 2016-07-11 13:00 A | 2016-07-11 14:00 A |  | 100% |  |  | 1h | 1h | 10,000 | 10,000 |
| 209 | 1.7.11.1.1 | Chức năng tạo và phân quyền cho moderator | 0.12d | 2016-07-11 13:00 A | 2016-07-11 14:00 A |  | 100% | start no earlier than 2016-07-11 13:17 | Trân | 1h | 1h | 10,000 | 10,000 |
| 210 | 1.7.11.2 | **Kiểm thử** | 0.06d | 2016-07-11 14:31 A | 2016-07-11 15:01 A | 208 | 100% |  |  | 0.5h | 0.5h | 5,000 | 5,000 |
| 211 | 1.7.11.2.1 | Test chức năng | 0.03d | 2016-07-11 14:31 A | 2016-07-11 14:46 A |  | 100% |  | Vinh | 0.25h | 0.25h | 2,500 | 2,500 |
| 212 | 1.7.11.2.2 | Báo cáo lỗi | 0.03d | 2016-07-11 14:46 A | 2016-07-11 15:01 A | 211 | 100% |  | Vinh | 0.25h | 0.25h | 2,500 | 2,500 |
| 213 | 1.7.12 | **Mã hóa mật khẩu** | 0.29d | 2016-07-12 10:00 A | 2016-07-12 13:21 A |  | 100% |  |  | 1.34h | 1.34h | 13,366.67 | 13,366.67 |
| 214 | 1.7.12.1 | **Cài đặt** | 0.12d | 2016-07-12 10:00 A | 2016-07-12 11:00 A |  | 100% |  |  | 1h | 1h | 10,000 | 10,000 |
| 215 | 1.7.12.1.1 | Nghiên cứu và cài đặt mã hóa mật khẩu | 0.12d | 2016-07-12 10:00 A | 2016-07-12 11:00 A |  | 100% |  | Trân | 1h | 1h | 10,000 | 10,000 |
| 216 | 1.7.12.2 | **Kiểm thử** | 0.04d | 2016-07-12 13:00 A | 2016-07-12 13:21 A | 214 | 100% |  |  | 0.34h | 0.34h | 3,366.67 | 3,366.67 |
| 217 | 1.7.12.2.1 | Test chức năng | 0.02d | 2016-07-12 13:00 A | 2016-07-12 13:10 A |  | 100% |  | Vinh | 0.17h | 0.17h | 1,666.67 | 1,666.67 |
| 218 | 1.7.12.2.2 | Báo cáo lỗi | 0.02d | 2016-07-12 13:11 A | 2016-07-12 13:21 A | 217 | 100% |  | Vinh | 0.17h | 0.17h | 1,700 | 1,700 |
| 219 | 1.7.13 | **Tự động gửi mail** | 0.23d | 2016-07-12 13:00 A | 2016-07-12 14:50 A | 213 | 100% |  |  | 1.34h | 1.34h | 13,400 | 13,400 |
| 220 | 1.7.13.1 | **Cài đặt** | 0.12d | 2016-07-12 13:00 A | 2016-07-12 14:00 A |  | 100% |  |  | 1h | 1h | 10,000 | 10,000 |
| 221 | 1.7.13.1.1 | Nghiên cứu và cài đặt cách gửi mail | 0.12d | 2016-07-12 13:00 A | 2016-07-12 14:00 A |  | 100% |  | Trân | 1h | 1h | 10,000 | 10,000 |
| 222 | 1.7.13.2 | **Kiểm thử** | 0.04d | 2016-07-12 14:30 A | 2016-07-12 14:50 A | 220 | 100% |  |  | 0.34h | 0.34h | 3,400 | 3,400 |
| 223 | 1.7.13.2.1 | Test chức năng | 0.02d | 2016-07-12 14:30 A | 2016-07-12 14:40 A |  | 100% |  | Vinh | 0.17h | 0.17h | 1,700 | 1,700 |
| 224 | 1.7.13.2.2 | Báo cáo lỗi | 0.02d | 2016-07-12 14:40 A | 2016-07-12 14:50 A | 223 | 100% |  | Vinh | 0.17h | 0.17h | 1,700 | 1,700 |

| ID | WBS | Task | Duration | Start | Finish | Predecessors | Complete | Resources | Work | Actual work | Cost | Actual cost |
| --- | --- | --- | --- | --- | --- | --- | --- | --- | --- | --- | --- | --- |
| 225 | 1.7.14 | **Thống kê** | 0.33d | 2016-07-13 10:00 A | 2016-07-13 13:40 A |  | 100% |  | 1.99h | 1.99h | 19,900 | 19,900 |
| 226 | 1.7.14.1 | **Cài đặt** | 0.17d | 2016-07-13 10:00 A | 2016-07-13 11:20 A |  | 100% |  | 1.32h | 1.32h | 13,200 | 13,200 |
| 227 | 1.7.14.1.1 | Thống kê thông tin về sản phẩm | 0.04d | 2016-07-13 10:00 A | 2016-07-13 10:19 A |  | 100% | Trân | 0.33h | 0.33h | 3,300 | 3,300 |
| 228 | 1.7.14.1.2 | Thống kê thông tin về hãng | 0.04d | 2016-07-13 10:20 A | 2016-07-13 10:39 A |  | 100% | Trân | 0.33h | 0.33h | 3,300 | 3,300 |
| 229 | 1.7.14.1.3 | Thống kê thông tin về hóa đơn | 0.04d | 2016-07-13 10:40 A | 2016-07-13 10:59 A |  | 100% | Trân | 0.33h | 0.33h | 3,300 | 3,300 |
| 230 | 1.7.14.1.4 | Thống kê thông tin về thành viên | 0.04d | 2016-07-13 11:01 A | 2016-07-13 11:20 A |  | 100% | Trân | 0.33h | 0.33h | 3,300 | 3,300 |
| 231 | 1.7.14.2 | **Kiểm thử** | 0.08d | 2016-07-13 13:00 A | 2016-07-13 13:40 A | 226 | 100% |  | 0.67h | 0.67h | 6,700 | 6,700 |
| 232 | 1.7.14.2.1 | Test chức năng | 0.06d | 2016-07-13 13:00 A | 2016-07-13 13:30 A |  | 100% | Vinh | 0.5h | 0.5h | 5,000 | 5,000 |
| 233 | 1.7.14.2.2 | Báo cáo lỗi | 0.02d | 2016-07-13 13:30 A | 2016-07-13 13:40 A | 232 | 100% | Vinh | 0.17h | 0.17h | 1,700 | 1,700 |
| 234 | 1.7.15 | **Tổng hợp code** | 0.38d | 2016-07-15 14:00 A | 2016-07-15 17:00 A | 225 | 100% |  | 3h | 3h | 30,000 | 30,000 |
| 235 | 1.7.15.1 | Tổng hợp tất cả code để hoàn chỉnh | 0.38d | 2016-07-15 14:00 A | 2016-07-15 17:00 A |  | 100% | Trân | 3h | 3h | 30,000 | 30,000 |
| 236 | 1.8 | **Phần 8: BIỂU ĐỒ** | 1.25d | 2016-07-15 10:00 A | 2016-07-18 11:59 A |  | 100% |  | 9h | 9h | 90,000 | 90,000 |
| 237 | 1.8.1 | Class Diagram | 0.25d | 2016-07-15 10:00 A | 2016-07-15 12:00 A |  | 100% | Quân | 2h | 2h | 20,000 | 20,000 |
| 238 | 1.8.2 | Comment StateChart | 0.12d | 2016-07-15 13:00 A | 2016-07-15 14:00 A | 237 | 100% | Quân | 1h | 1h | 10,000 | 10,000 |
| 239 | 1.8.3 | Register StateChart | 0.12d | 2016-07-15 14:00 A | 2016-07-15 15:00 A | 238 | 100% | Quân | 1h | 1h | 10,000 | 10,000 |
| 240 | 1.8.4 | Login StateChart | 0.06d | 2016-07-15 15:00 A | 2016-07-15 15:30 A | 239 | 100% | Quân | 0.5h | 0.5h | 5,000 | 5,000 |
| 241 | 1.8.5 | Logout StateChart | 0.06d | 2016-07-15 15:30 A | 2016-07-15 16:00 A | 240 | 100% | Quân | 0.5h | 0.5h | 5,000 | 5,000 |
| 242 | 1.8.6 | Checkout StateChart | 0.12d | 2016-07-15 16:00 A | 2016-07-15 17:00 A | 241 | 100% | Quân | 1h | 1h | 10,000 | 10,000 |
| 243 | 1.8.7 | Manage User's Profile Statechart | 0.12d | 2016-07-18 09:00 A | 2016-07-18 10:00 A | 242 | 100% | Quân | 1h | 1h | 10,000 | 10,000 |
| 244 | 1.8.8 | Admin function | 0.25d | 2016-07-18 09:59 A | 2016-07-18 11:59 A | 243 | 100% | Quân | 2h | 2h | 20,000 | 20,000 |
| 245 | 1.9 | **Phần 9: TRIỂN KHAI** | 0.25d | 2016-07-18 09:58 A | 2016-07-18 12:00 A |  | 100% |  | 2h | 2h | 20,000 | 20,000 |
| 246 | 1.9.1 | Demo tất cả chức năng website | 0.25d | 2016-07-18 09:58 A | 2016-07-18 12:00 A | 134 | 100% | Trân | 2h | 2h | 20,000 | 20,000 |
